# BarrocIT_planning

Schedule from MS Project, 2015-09-07 to 2015-11-03, 5 hours a day, A marks actual dates.

## Calendars

- Standaard: Mon 08:40-12:40; Tue 09:20-12:00; Wed-Fri 08:40-12:40; Sat-Sun off. Exceptions (off unless hours are given): 2015-10-24 to 2015-11-01 (Herfstvakantie).

## Resources

| Resource |
| --- |
| Steven Logghe |
| Santino Bonora |
| Tom Smits |

## Schedule

| ID | WBS | Task | Type | Duration | Start | Finish | Predecessors | Complete | Remaining | Total slack | Free slack | Resources | Work | Actual work |
| --- | --- | --- | --- | --- | --- | --- | --- | --- | --- | --- | --- | --- | --- | --- |
| 1 | 1 | Start | milestone, manual | 0d | 2015-09-07 | 2015-09-07 |  |  |  |  |  |  |  |  |
| 2 | 2 | **Inception Phase** |  | 10.52d | 2015-09-07 A | 2015-09-25 |  | 28% | 7.6d | 1.81d | 0d |  | 92.2h | 28.15h |
| 3 | 2.1 | Interview voorbereiden |  | 1h | 2015-09-07 A | 2015-09-07 A |  | 100% |  |  |  | Tom Smits; Santino Bonora; Steven Logghe | 3h | 3h |
| 4 | 2.2 | Interview houden en gesprekverslag terug koppelen |  | 0.3h | 2015-09-07 | 2015-09-07 | 3 |  |  | 0.04d | 0d | Santino Bonora; Tom Smits; Steven Logghe | 0.9h |  |
| 5 | 2.3 | Hernieuwde opdracht |  | 5h | 2015-09-07 | 2015-09-08 | 4 |  |  | 0.04d | 0d | Santino Bonora | 5h |  |
| 6 | 2.4 | Prototype van schermen gebaseerd op interview |  | 2h | 2015-09-08 A | 2015-09-09 | 5 | 10% | 1.8h | 0.23d | 0d | Steven Logghe | 2h | 0.2h |
| 7 | 2.5 | Offerte uitbrengen |  | 7h | 2015-09-09 | 2015-09-11 | 6 |  |  | 0.23d | 0.2d | Tom Smits | 7h |  |
| 8 | 2.6 | Agenda en notulen van elke vergadering |  | 0.3h | 2015-09-11 A | 2015-09-11 | 7 | 50% | 0.15h | 0.48d | 0d | Tom Smits | 0.3h | 0.15h |
| 9 | 2.7 | Plan van aanpak (incl risico analyse) |  | 14h | 2015-09-11 A | 2015-09-17 | 8 | 17% | 11.6h | 6.21d |  | Santino Bonora; Tom Smits | 28h | 4.8h |
| 10 | 2.8 | Globale planning voor het gehele project (MS Project) |  | 10h | 2015-09-17 A | 2015-09-22 A | 9 | 100% |  |  |  | Tom Smits; Steven Logghe | 20h | 20h |
| 11 | 2.9 | Gedetailleerde taakverdeling van het functioneel ontwerp in MS Project |  | 2h | 2015-09-22 | 2015-09-23 | 10 |  |  | 1.81d | 0d | Steven Logghe | 2h |  |
| 12 | 2.10 | Use-case diagram |  | 2h | 2015-09-23 | 2015-09-23 | 11 |  |  | 1.81d | 0d | Santino Bonora; Tom Smits; Steven Logghe | 6h |  |
| 13 | 2.11 | Use-case templates |  | 2h | 2015-09-23 | 2015-09-24 | 12 |  |  | 1.81d | 0d | Santino Bonora; Tom Smits; Steven Logghe | 6h |  |
| 14 | 2.12 | Activiteitendiagrammen |  | 4h | 2015-09-24 | 2015-09-25 | 13 |  |  | 1.81d |  | Santino Bonora; Tom Smits; Steven Logghe | 12h |  |
| 15 | 3 | **Elaboration Phase** |  | 4.8d | 2015-09-25 | 2015-10-05 | 2 |  |  | 1.81d | 0d |  | 50h |  |
| 16 | 3.1 | Gedetailleerde taakverdeling van het technische ontwerp in MS Project |  | 2h | 2015-09-25 | 2015-09-25 |  |  |  | 1.81d | 0d | Steven Logghe | 2h |  |
| 17 | 3.2 | Modeldictionary |  | 3h | 2015-09-25 | 2015-09-28 | 16 |  |  | 1.81d | 0d | Santino Bonora; Tom Smits; Steven Logghe | 9h |  |
| 18 | 3.3 | Klassendiagram |  | 3h | 2015-09-28 | 2015-09-29 | 17 |  |  | 1.81d | 0d | Tom Smits | 3h |  |
| 19 | 3.4 | Ontwerp datadictionary |  | 4h | 2015-09-29 | 2015-09-30 | 18 |  |  | 1.81d | 0d | Santino Bonora; Tom Smits; Steven Logghe | 12h |  |
| 20 | 3.5 | Sequentie diagrammen |  | 4h | 2015-09-30 | 2015-10-01 | 19 |  |  | 1.81d | 0d | Santino Bonora; Tom Smits; Steven Logghe | 12h |  |
| 21 | 3.6 | Overzicht taakverdeling inrichten van de ontwikkelomgeving |  | 4h | 2015-10-01 | 2015-10-02 | 20 |  |  | 1.81d | 0d | Santino Bonora; Tom Smits | 8h |  |
| 22 | 3.7 | Overzicht van de gebruikte hard- en software van de ingerichte ontwikkelomgeving |  | 4h | 2015-10-02 | 2015-10-05 | 21 |  |  | 1.81d |  | Steven Logghe | 4h |  |
| 23 | 4 | **Construction Phase** |  | 5.4d | 2015-10-05 | 2015-10-14 | 15 |  |  | 1.81d | 0d |  | 45h |  |
| 24 | 4.1 | Genormaliseerd databaseontwerp |  | 3h | 2015-10-05 | 2015-10-06 |  |  |  | 1.81d | 0d | Steven Logghe | 3h |  |
| 25 | 4.2 | Defenitieve datadictionery |  | 3h | 2015-10-06 | 2015-10-07 | 24 |  |  | 1.81d | 0d | Santino Bonora | 3h |  |
| 26 | 4.3 | De database (gebouwd) |  | 3h | 2015-10-07 | 2015-10-08 | 25 |  |  | 1.81d | 0d | Tom Smits; Steven Logghe | 6h |  |
| 27 | 4.4 | Werkende solution/webapplicatie. Alle functionaliteit is gerealiseerd |  | 3h | 2015-10-08 | 2015-10-08 | 26 |  |  | 1.81d | 0d | Tom Smits | 3h |  |
| 28 | 4.5 | Dataset |  | 3h | 2015-10-08 | 2015-10-09 | 27 |  |  | 1.81d | 0d | Tom Smits; Steven Logghe | 6h |  |
| 29 | 4.6 | Technische test is gemaakt |  | 3h | 2015-10-09 | 2015-10-12 | 28 |  |  | 1.81d | 0d | Santino Bonora | 3h |  |
| 30 | 4.7 | Technische test is uitgevoerd |  | 3h | 2015-10-12 | 2015-10-13 | 29 |  |  | 1.81d | 0d | Santino Bonora; Tom Smits; Steven Logghe | 9h |  |
| 31 | 4.8 | Functionele test is gemaakt |  | 3h | 2015-10-13 | 2015-10-14 | 30 |  |  | 1.81d | 0d | Santino Bonora | 3h |  |
| 32 | 4.9 | Functionele test is uitgevoerd |  | 3h | 2015-10-14 | 2015-10-14 | 31 |  |  | 1.81d |  | Santino Bonora; Tom Smits; Steven Logghe | 9h |  |

| ID | WBS | Task | Type | Duration | Start | Finish | Predecessors | Total slack | Free slack | Resources | Work |
| --- | --- | --- | --- | --- | --- | --- | --- | --- | --- | --- | --- |
| 33 | 5 | **Transition Phase** |  | 6.21d | 2015-10-14 | 2015-11-03 | 23 | 0d |  |  | 66h |
| 34 | 5.1 | Acceptatietest is uitgevoerd bij (gebruiker van) de opdracht gever |  | 8h | 2015-10-14 | 2015-10-16 |  | 1.81d | 0d | Santino Bonora; Tom Smits; Steven Logghe | 24h |
| 35 | 5.2 | Gebruikershandleiding |  | 4h | 2015-10-16 | 2015-10-19 | 34 | 1.81d | 0d | Santino Bonora; Tom Smits; Steven Logghe | 12h |
| 36 | 5.3 | Projectrapport |  | 4h | 2015-10-19 | 2015-10-21 | 35 | 1.81d | 0d | Santino Bonora; Tom Smits; Steven Logghe | 12h |
| 37 | 5.4 | Teamrapport |  | 2h | 2015-10-21 | 2015-10-21 | 36 | 1.81d | 0d | Santino Bonora; Tom Smits; Steven Logghe | 6h |
| 38 | 5.5 | Presentatie |  | 2h | 2015-10-21 | 2015-10-22 | 37 | 1.81d | 0d | Santino Bonora; Tom Smits; Steven Logghe | 6h |
| 39 | 5.6 | Logboek Tijdregistratie |  | 2h | 2015-10-22 | 2015-10-22 | 38 | 1.81d |  | Santino Bonora; Tom Smits; Steven Logghe | 6h |
| 40 | 5.7 | Einde | milestone, manual | 0d | 2015-11-03 | 2015-11-03 |  |  |  |  |  |
